| TaskID | TaskName | StartDate | EndDate | Duration | Progress | DurationUnit | resources | Predecessor | info |
| --- | --- | --- | --- | --- | --- | --- | --- | --- | --- |
| 1 | Documentation | 2024-10-01T05:00:00.000Z | 2024-12-22T15:00:00.000Z | 83 | 99 | day |  |  |  |
| 2 | · PDR | 2024-10-01T05:00:00.000Z | 2024-11-17T15:00:00.000Z | 48 | 100 | day | Shaked Basa Shaked Basa 100, Yevgeniy Gluhoy Yevgeniy Gluhoy 100 |  |  |
| 3 | · Project documentation | 2024-11-18T06:00:00.000Z | 2024-11-22T15:00:00.000Z | 5 | 100 | day | Shaked Basa Shaked Basa 100, Yevgeniy Gluhoy Yevgeniy Gluhoy 100 | 2FS | FSM, block schems and simulation process schem |
| 4 | · Preliminary report | 2024-12-15T06:00:00.000Z | 2024-12-22T15:00:00.000Z | 8 | 95 | day | Shaked Basa Shaked Basa 100, Yevgeniy Gluhoy Yevgeniy Gluhoy 100 |  |  |
| 5 | · Pre-project documentation completed | 2024-12-22T15:00:00.000Z | 2024-12-22T15:00:00.000Z | 0 | 100 | day | Shaked Basa Shaked Basa 100, Yevgeniy Gluhoy Yevgeniy Gluhoy 100 | 3FS,2FS,4FS |  |
| 7 | Physical layer | 2024-12-15T06:00:00.000Z | 2025-03-02T15:00:00.000Z | 78 | 10 | day | Shaked Basa Shaked Basa 100, Yevgeniy Gluhoy Yevgeniy Gluhoy 100 |  |  |
| 6 | · Implementation of calculation functions in c++ | 2024-12-15T06:00:00.000Z | 2024-12-18T15:00:00.000Z | 4 | 100 | day | Shaked Basa Shaked Basa 100 |  | Battery discharge and channel models |
| 8 | · Calculation block | 2024-12-19T06:00:00.000Z | 2024-12-22T15:00:00.000Z | 4 | 50 | day | Shaked Basa Shaked Basa 100 | 6FS | Integration of functions into OMNET++ standarts |
| 9 | · Map block | 2024-12-15T06:00:00.000Z | 2024-12-21T15:00:00.000Z | 7 | 90 | day | Yevgeniy Gluhoy Yevgeniy Gluhoy 100 |  |  |
| 10 | · Final Basic protocol layer design and OMNET++ self-learning | 2024-12-22T06:00:00.000Z | 2024-12-29T15:00:00.000Z | 8 | 0 | day | Shaked Basa Shaked Basa 100, Yevgeniy Gluhoy Yevgeniy Gluhoy 100 | 9FS,8FS-1 days |  |
| 11 | · Drone block | 2024-12-29T06:00:00.000Z | 2025-01-05T15:00:00.000Z | 8 | 0 | day | Shaked Basa Shaked Basa 100 | 8FS+6 days,10FS-1 days,9FS+7 days |  |
| 12 | · Manual user block | 2024-12-29T06:00:00.000Z | 2025-01-05T15:00:00.000Z | 8 | 0 | day | Yevgeniy Gluhoy Yevgeniy Gluhoy 100 | 9FS+7 days,8FS+6 days,10FS-1 days |  |
| 27 | · Logger | 2025-01-05T06:00:00.000Z | 2025-01-12T15:00:00.000Z | 8 | 0 | day | Yevgeniy Gluhoy Yevgeniy Gluhoy 100 |  |  |
| 13 | · Simulation control block | 2024-12-21T06:00:00.000Z | 2025-02-02T15:00:00.000Z | 44 | 0 | day | Shaked Basa Shaked Basa 100, Yevgeniy Gluhoy Yevgeniy Gluhoy 100 | 8SS+2 days,9SS+6 days,10SS-1 days,11SS-8 days,12SS-8 days |  |
| 22 | · Testing and debugging | 2025-02-02T06:00:00.000Z | 2025-03-02T15:00:00.000Z | 29 | 0 | day | Shaked Basa Shaked Basa 100, Yevgeniy Gluhoy Yevgeniy Gluhoy 100 | 27FS,13FS-1 days |  |
| 14 | · Physical layer is ready! | 2025-03-02T15:00:00.000Z | 2025-03-02T15:00:00.000Z | 0 | 0 | day | Shaked Basa Shaked Basa 100, Yevgeniy Gluhoy Yevgeniy Gluhoy 100 | 22FS,8FS,9FS,11FS,12FS,13FS |  |
| 16 | Progress - documentation | 2025-03-16T06:00:00.000Z | 2025-03-23T15:00:00.000Z | 8 | 0 | day | Shaked Basa Shaked Basa 100, Yevgeniy Gluhoy Yevgeniy Gluhoy 100 |  |  |
| 15 | Basic protocol layer | 2025-03-23T06:00:00.000Z | 2025-04-22T14:00:00.000Z | 31 | 0 | day | Yevgeniy Gluhoy Yevgeniy Gluhoy 100 |  |  |
| 17 | · Basic protocol code | 2025-03-23T06:00:00.000Z | 2025-04-22T14:00:00.000Z | 31 | 0 | day | Yevgeniy Gluhoy Yevgeniy Gluhoy 100 |  |  |
| 18 | · Basic protocol layer complete | 2025-04-22T14:00:00.000Z | 2025-04-22T14:00:00.000Z | 0 | 0 | day | Yevgeniy Gluhoy Yevgeniy Gluhoy 100 | 17FS |  |
| 19 | User layer | 2025-03-23T06:00:00.000Z | 2025-04-22T14:00:00.000Z | 31 | 0 | day | Shaked Basa Shaked Basa 100 |  |  |
| 20 | · API/GUI | 2025-03-23T06:00:00.000Z | 2025-04-22T14:00:00.000Z | 31 | 0 | day |  |  |  |
| 21 | · User layer complete | 2025-04-22T14:00:00.000Z | 2025-04-22T14:00:00.000Z | 0 | 0 | day | Shaked Basa Shaked Basa 100 | 20FS |  |
| 23 | Testing and debugging | 2025-04-23T05:00:00.000Z | 2025-07-15T14:00:00.000Z | 84 | 0 | day | Shaked Basa Shaked Basa 100, Yevgeniy Gluhoy Yevgeniy Gluhoy 100 |  |  |
| 24 | · Functionality tests | 2025-04-23T05:00:00.000Z | 2025-05-07T14:00:00.000Z | 15 | 0 | day | Shaked Basa Shaked Basa 100, Yevgeniy Gluhoy Yevgeniy Gluhoy 100 |  | Checking the simulator logic, test that all blocks works properly |
| 25 | · Final test | 2025-05-07T05:00:00.000Z | 2025-07-15T14:00:00.000Z | 70 | 0 | day | Shaked Basa Shaked Basa 100, Yevgeniy Gluhoy Yevgeniy Gluhoy 100 | 24FS-1 days |  |
| 26 | · Simulator is ready for use! | 2025-07-15T14:00:00.000Z | 2025-07-15T14:00:00.000Z | 0 | 0 | day | Shaked Basa Shaked Basa 100, Yevgeniy Gluhoy Yevgeniy Gluhoy 100 | 25FS,24FS |  |

Links (from, to):
- 8 12
- 13 17
